# Sample Substation Project

Schedule from MS Project XML, 2026-10-01 to 2027-01-29, status date 2026-11-10, A marks actual dates.

## Schedule

| ID | WBS | Task | Duration | Start | Finish | Predecessors | Complete | Remaining | Actual start | Actual finish | Total slack |
| --- | --- | --- | --- | --- | --- | --- | --- | --- | --- | --- | --- |
| 1 | 1 | **Sample Substation Project** | 120d | 2026-10-01 | 2027-01-29 |  |  |  |  |  | 0d |
| 2 | 1.1 | **Engineering** | 30d | 2026-10-01 | 2026-10-31 |  |  |  |  |  | 0d |
| 3 | 1.1.1 | Design Basis Report | 10d | 2026-10-01 A | 2026-10-11 |  | 100% |  |  | 2026-10-13 |  |
| 4 | 1.1.2 | Detailed Design | 20d | 2026-10-11 | 2026-10-31 | 3 | 100% |  | 2026-10-13 | 2026-11-06 |  |
| 5 | 1.1.3 | Design Review | 5d | 2026-10-21 | 2026-10-26 | 4SS+10d | 100% |  | 2026-10-26 | 2026-10-30 |  |
| 6 | 1.2 | **Procurement** | 60d | 2026-10-16 | 2026-12-15 |  |  |  |  |  | 0d |
| 7 | 1.2.1 | Transformer Order | 5d | 2026-10-16 A | 2026-10-21 A | 4SS+5d | 100% |  |  |  |  |
| 8 | 1.2.2 | Transformer Delivery | 55d | 2026-10-21 A | 2026-12-15 | 7 | 45% | 35d |  |  | 0d |
| 9 | 1.3 | **Civil Works** | 50d | 2026-10-31 | 2026-12-20 |  |  |  |  |  | 0d |
| 10 | 1.3.1 | Site Clearance | 10d | 2026-10-31 | 2026-11-10 | 4 | 40% | 0d | 2026-11-06 |  | 0d |
| 11 | 1.3.2 | Foundations | 25d | 2026-11-10 | 2026-12-05 | 10 |  |  |  |  | 0d |
| 12 | 1.3.3 | Cable Trenches | 15d | 2026-11-20 | 2026-12-05 | 11SS+10d |  |  |  |  | 0d |
| 13 | 1.4 | **Installation** | 40d | 2026-12-05 | 2027-01-14 |  |  |  |  |  | 0d |
| 14 | 1.4.1 | Transformer Erection | 15d | 2026-12-15 | 2026-12-30 | 11FS+10d, 8 |  |  |  |  | 0d |
| 15 | 1.4.2 | Cabling | 20d | 2026-12-05 | 2026-12-25 | 12 |  |  |  |  | 0d |
| 16 | 1.4.3 | Protection & Control | 10d | 2027-01-04 | 2027-01-14 | 14FS+5d, 15 |  |  |  |  | 0d |
| 17 | 1.5 | **Commissioning** | 15d | 2027-01-14 | 2027-01-29 |  |  |  |  |  | 0d |
| 18 | 1.5.1 | Pre-commissioning Tests | 10d | 2027-01-14 | 2027-01-24 | 16 |  |  |  |  | 0d |
| 19 | 1.5.2 | Energisation | 5d | 2027-01-24 | 2027-01-29 | 18 |  |  |  |  | 0d |
